# Veazy_Project Schedule_v1.2_EN

Schedule from MS Project, 2016-05-09 to 2016-09-01.
Veazy_Project Schedule_v1.2_EN
FPT

## Calendars

- Standard: Mon-Fri 08:00-12:00, 13:00-17:00; Sat-Sun off.

## Resources

| Resource |
| --- |
| MinhNN |
| TungDT |
| ThangPD |
| DuyNT |
| QuanNH |
| LinhNH |
| TEAM |
| DevTeam |
| DocTeam |
| TestTeam |
| FrontendTeam |
| BackendTeam |

## Schedule

| ID | WBS | Task | Type | Duration | Start | Finish | Predecessors | Total slack | Free slack | Constraint | Resources | Work |
| --- | --- | --- | --- | --- | --- | --- | --- | --- | --- | --- | --- | --- |
| 1 | 1 | **Veazy** |  | 84d | 2016-05-09 08:00 | 2016-09-01 17:00 |  | 0d |  |  |  | 1728h |
| 2 | 1.1 | **Initiation** |  | 12.5d | 2016-05-09 08:00 | 2016-05-25 12:00 |  | 1d | 0d |  |  | 220h |
| 3 | 1.1.1 | **Form up** |  | 0.5d | 2016-05-09 08:00 | 2016-05-09 12:00 |  | 1d |  |  |  | 4h |
| 4 | 1.1.1.1 | Form up team roles |  | 0.25d | 2016-05-09 08:00 | 2016-05-09 10:00 |  | 1d | 0d | start no earlier than 2016-05-09 08:00 | TEAM | 2h |
| 5 | 1.1.1.2 | Uniform idea meeting |  | 0.25d | 2016-05-09 10:00 | 2016-05-09 12:00 | 4 | 1d | 0d |  | TEAM | 2h |
| 6 | 1.1.2 | **Project Clarification** |  | 1d | 2016-05-09 13:00 | 2016-05-10 12:00 |  | 1d | 0d |  |  | 12h |
| 7 | 1.1.2.1 | Clarify project scope |  | 0.1d | 2016-05-09 13:00 | 2016-05-09 13:48 | 5 | 1d | 0d |  | TEAM | 0.8h |
| 8 | 1.1.2.2 | Clarify technical requirements |  | 0.1d | 2016-05-09 13:48 | 2016-05-09 14:36 | 7 | 1d | 0d |  | TungDT | 0.8h |
| 9 | 1.1.2.3 | Clarify rules in Team |  | 0.1d | 2016-05-09 14:36 | 2016-05-09 15:24 | 8 | 1d | 0d |  | QuanNH | 0.8h |
| 10 | 1.1.2.4 | Clarify working environments |  | 0.1d | 2016-05-09 15:24 | 2016-05-09 16:12 | 9 | 1d | 0d |  | TEAM | 0.8h |
| 11 | 1.1.2.5 | Develop communications plan |  | 0.1d | 2016-05-09 16:12 | 2016-05-09 17:00 | 10 | 1d | 0d |  | MinhNN | 0.8h |
| 12 | 1.1.2.6 | List project features |  | 0.5d | 2016-05-10 08:00 | 2016-05-10 12:00 | 11 | 1d | 0d | start no earlier than 2016-05-10 08:00 | TEAM | 4h |
| 13 | 1.1.2.7 | Initiate Project structure |  | 0.5d | 2016-05-10 08:00 | 2016-05-10 12:00 | 11 | 1d |  |  | MinhNN | 4h |
| 14 | 1.1.3 | **Environment** |  | 1d | 2016-05-10 13:00 | 2016-05-11 12:00 | 6 | 1d | 0d |  |  | 8h |
| 15 | 1.1.3.1 | Create guideline of installing and using environments |  | 2h | 2016-05-10 13:00 | 2016-05-10 15:00 | 12 | 1d | 0d |  | MinhNN | 2h |
| 16 | 1.1.3.2 | Setup Git Bash |  | 0.5h | 2016-05-10 15:00 | 2016-05-10 15:30 | 15 | 1d | 0d |  | TEAM | 0.5h |
| 17 | 1.1.3.3 | Setup Eclipse & Plugin |  | 2h | 2016-05-10 15:30 | 2016-05-11 08:30 | 16 | 1d | 0d |  | TEAM | 2h |
| 18 | 1.1.3.4 | Setup Postgresql Server |  | 1.5h | 2016-05-11 08:30 | 2016-05-11 10:00 | 17 | 1d | 0d |  | TEAM | 1.5h |
| 19 | 1.1.3.5 | Training environments meeting |  | 2h | 2016-05-11 10:00 | 2016-05-11 12:00 | 18 | 1d |  |  | TEAM | 2h |
| 20 | 1.1.4 | **Technology research** |  | 1.5d | 2016-05-11 13:00 | 2016-05-12 17:00 | 14 | 1d | 0d |  |  | 40h |
| 21 | 1.1.4.1 | Research technologies to be used in project |  | 0.5d | 2016-05-11 13:00 | 2016-05-11 17:00 |  | 1d | 0d |  | DuyNT; MinhNN | 8h |
| 22 | 1.1.4.2 | Study SpringMVC & Hibernate |  | 1d | 2016-05-12 08:00 | 2016-05-12 17:00 | 21 | 1d |  |  | LinhNH; TungDT | 16h |
| 23 | 1.1.4.3 | Study AngularJS, jQuery, Bootstrap |  | 1d | 2016-05-12 08:00 | 2016-05-12 17:00 | 21 | 1d |  | start no earlier than 2016-05-12 08:00 | QuanNH; ThangPD | 16h |
| 24 | 1.1.5 | **Project Introduction** |  | 3d | 2016-05-12 13:00 | 2016-05-17 12:00 | 21 | 7d |  |  |  | 24h |
| 25 | 1.1.5.1 | Create "Project Introduction" document |  | 1.5d | 2016-05-12 13:00 | 2016-05-13 17:00 |  | 7d | 0d | finish no earlier than 2016-05-13 17:00 | DuyNT | 12h |
| 26 | 1.1.5.2 | Review "Project Introduction" document |  | 0.5d | 2016-05-16 08:00 | 2016-05-16 12:00 | 25 | 7d | 0d |  | MinhNN | 4h |
| 27 | 1.1.5.3 | Update "Project Introduction" document draft |  | 0.5d | 2016-05-16 13:00 | 2016-05-16 17:00 | 26 | 7d | 0d |  | DuyNT | 4h |
| 28 | 1.1.5.4 | Update "Project Introduction" based on instructor's comments |  | 0.5d | 2016-05-17 08:00 | 2016-05-17 12:00 | 27 | 7d | 0d |  | DuyNT | 4h |
| 29 | 1.1.5.5 | Summit Project Introduction | milestone | 0d | 2016-05-17 12:00 | 2016-05-17 12:00 | 28 | 7d |  |  |  |  |

| ID | WBS | Task | Type | Duration | Start | Finish | Predecessors | Total slack | Free slack | Resources | Work |
| --- | --- | --- | --- | --- | --- | --- | --- | --- | --- | --- | --- |
| 30 | 1.1.6 | **Requirement** |  | 4.5d | 2016-05-13 08:00 | 2016-05-19 12:00 | 20 | 1d | 0d |  | 52h |
| 31 | 1.1.6.1 | **User Requirement** |  | 2d | 2016-05-13 08:00 | 2016-05-16 17:00 |  | 1d | 0d |  | 32h |
| 32 | 1.1.6.1.1 | Develop brief "User Requirements Specification" document |  | 1d | 2016-05-13 08:00 | 2016-05-13 17:00 | 20 | 1d | 0d | QuanNH; ThangPD | 16h |
| 33 | 1.1.6.1.2 | Peer review brief "User Requirements Specification" document |  | 0.5d | 2016-05-16 08:00 | 2016-05-16 12:00 | 32 | 1d | 0d | LinhNH; TungDT | 8h |
| 34 | 1.1.6.1.3 | Update brief "User Requirements Specification" document |  | 0.5d | 2016-05-16 13:00 | 2016-05-16 17:00 | 33 | 1d |  | QuanNH; ThangPD | 8h |
| 35 | 1.1.6.2 | **Mock-up screens** |  | 2.5d | 2016-05-17 08:00 | 2016-05-19 12:00 | 31 | 4d |  |  | 20h |
| 36 | 1.1.6.2.1 | Collect business requirements and processes |  | 0.5d | 2016-05-17 08:00 | 2016-05-17 12:00 |  | 4d | 0d | TEAM | 4h |
| 37 | 1.1.6.2.2 | Develop main features' mockup screens |  | 1.5d | 2016-05-17 13:00 | 2016-05-18 17:00 | 36 | 4d | 0d | DevTeam | 12h |
| 38 | 1.1.6.2.3 | Review and edit screen main features' mockup screens |  | 0.5d | 2016-05-19 08:00 | 2016-05-19 12:00 | 37 | 4d | 0d | DevTeam | 4h |
| 39 | 1.1.6.2.4 | Complete main features' mockup screens | milestone | 0d | 2016-05-19 12:00 | 2016-05-19 12:00 | 38 | 4d |  |  |  |
| 40 | 1.1.7 | **Project Plan** |  | 5.5d | 2016-05-17 08:00 | 2016-05-24 12:00 | 31 | 1d | 0d |  | 60h |
| 41 | 1.1.7.1 | Develop project definition |  | 0.5d | 2016-05-17 08:00 | 2016-05-17 12:00 | 14 | 6d |  | LinhNH; TungDT | 8h |
| 42 | 1.1.7.2 | Create CM Plan document |  | 0.5d | 2016-05-17 08:00 | 2016-05-17 12:00 | 14 | 6d |  | QuanNH | 4h |
| 43 | 1.1.7.3 | Develop Risk Register |  | 0.5d | 2016-05-17 08:00 | 2016-05-17 12:00 | 14 | 6d |  | TungDT | 4h |
| 44 | 1.1.7.4 | Create Project plan document |  | 2d | 2016-05-17 08:00 | 2016-05-18 17:00 | 14 | 1d | 0d | MinhNN | 16h |
| 45 | 1.1.7.5 | Create Work BreakDown Structure |  | 0.5d | 2016-05-19 08:00 | 2016-05-19 12:00 | 44 | 1d | 0d | MinhNN | 4h |
| 46 | 1.1.7.6 | Create Project schedule document |  | 2d | 2016-05-19 13:00 | 2016-05-23 12:00 | 45 | 1d | 0d | MinhNN | 16h |
| 47 | 1.1.7.7 | Review & get comment of Project Plan |  | 0.5d | 2016-05-23 13:00 | 2016-05-23 17:00 | 46 | 1d | 0d | MinhNN | 4h |
| 48 | 1.1.7.8 | Update Project Plan documents (Schedule, Project Plan in MS Word, CM Plan) |  | 0.5d | 2016-05-24 08:00 | 2016-05-24 12:00 | 47 | 1d | 0d | MinhNN | 4h |
| 49 | 1.1.7.9 | Summit Project Plan Final version | milestone | 0d | 2016-05-24 12:00 | 2016-05-24 12:00 | 48 | 1d |  |  |  |
| 50 | 1.1.8 | **Q&A sheet** |  | 1d | 2016-05-19 13:00 | 2016-05-20 12:00 | 30 | 4d |  |  | 12h |
| 51 | 1.1.8.1 | Create Q&A |  | 0.5d | 2016-05-19 13:00 | 2016-05-19 17:00 | 30 | 4d | 0d | QuanNH | 4h |
| 52 | 1.1.8.2 | Update Q&A sheet |  | 0.5d | 2016-05-20 08:00 | 2016-05-20 12:00 | 51 | 4d |  | QuanNH | 4h |
| 53 | 1.1.8.3 | Translate Q&A sheet |  | 0.5d | 2016-05-20 08:00 | 2016-05-20 12:00 | 51 | 4d |  | DuyNT | 4h |
| 54 | 1.1.9 | Kick-off meeting |  | 0.5d | 2016-05-24 13:00 | 2016-05-24 17:00 | 40 | 1d | 0d | TEAM | 4h |
| 55 | 1.1.10 | Phase meeting |  | 0.5d | 2016-05-25 08:00 | 2016-05-25 12:00 | 54 | 1d |  | TEAM | 4h |
| 56 | 1.1.11 | Finish initiation phase | milestone | 0d | 2016-05-09 11:00 | 2016-05-09 11:00 |  | 13.12d |  |  |  |

| ID | WBS | Task | Type | Duration | Start | Finish | Predecessors | Total slack | Free slack | Resources | Work |
| --- | --- | --- | --- | --- | --- | --- | --- | --- | --- | --- | --- |
| 57 | 1.2 | **Solution** |  | 25d | 2016-05-25 12:00 | 2016-06-29 12:00 | 2 | 1d | 0d |  | 380h |
| 58 | 1.2.1 | **Sofware Requirement Specification** |  | 5d | 2016-05-25 13:00 | 2016-06-01 12:00 |  | 3d | 0d |  | 112h |
| 59 | 1.2.1.1 | **Functional Requirement Specification** |  | 4d | 2016-05-25 13:00 | 2016-05-31 12:00 |  | 3d |  |  | 96h |
| 60 | 1.2.1.1.1 | **Core Module** |  | 4d | 2016-05-25 13:00 | 2016-05-31 12:00 |  | 3d | 0d |  | 96h |
| 61 | 1.2.1.1.1.1 | Authentication module |  | 1d | 2016-05-25 13:00 | 2016-05-26 12:00 | 2 | 3d | 0d | DuyNT | 8h |
| 62 | 1.2.1.1.1.2 | Account Management module |  | 2d | 2016-05-25 13:00 | 2016-05-27 12:00 | 2 | 3d | 0d | QuanNH | 16h |
| 63 | 1.2.1.1.1.3 | Learning module |  | 4d | 2016-05-25 13:00 | 2016-05-31 12:00 | 2 | 3d |  | ThangPD | 32h |
| 64 | 1.2.1.1.1.4 | Question Bank module |  | 2d | 2016-05-26 13:00 | 2016-05-30 12:00 | 61 | 3d | 0d | DuyNT | 16h |
| 65 | 1.2.1.1.1.5 | Examination module |  | 2d | 2016-05-27 13:00 | 2016-05-31 12:00 | 62 | 3d |  | QuanNH | 16h |
| 66 | 1.2.1.1.1.6 | Content Reporting module |  | 0.5d | 2016-05-30 13:00 | 2016-05-30 17:00 | 64 | 3d | 0d | DuyNT | 4h |
| 67 | 1.2.1.1.1.7 | Statistic module |  | 0.5d | 2016-05-31 08:00 | 2016-05-31 12:00 | 66 | 3d |  | DuyNT | 4h |
| 68 | 1.2.1.2 | **Non-functional Requirements Specification** |  | 1d | 2016-05-31 13:00 | 2016-06-01 12:00 | 60 | 3d | 0d |  | 16h |
| 69 | 1.2.1.2.1 | Develop User Interface requirements |  | 1d | 2016-05-31 13:00 | 2016-06-01 12:00 |  | 3d |  | QuanNH | 8h |
| 70 | 1.2.1.2.2 | Develop Performance requirements |  | 1d | 2016-05-31 13:00 | 2016-06-01 12:00 | 60 | 3d |  | ThangPD | 8h |
| 71 | 1.2.2 | Submit SRS | milestone | 0d | 2016-06-01 12:00 | 2016-06-01 12:00 | 68 | 27d |  |  |  |
| 72 | 1.2.3 | **System Architectural Design** |  | 2d | 2016-05-25 13:00 | 2016-05-27 12:00 | 2 | 1d | 0d |  | 16h |
| 73 | 1.2.3.1 | Define the system structure and unify system features |  | 1d | 2016-05-25 13:00 | 2016-05-26 12:00 |  | 1d | 0d | MinhNN | 8h |
| 74 | 1.2.3.2 | Study the common System Architetures |  | 0.5d | 2016-05-26 13:00 | 2016-05-26 17:00 | 73 | 1d | 0d | MinhNN | 4h |
| 75 | 1.2.3.3 | Make choice of System Architeture |  | 0.5d | 2016-05-27 08:00 | 2016-05-27 12:00 | 74 | 1d | 0d | MinhNN | 4h |
| 76 | 1.2.3.4 | Complete Architecture Design version 1.0 | milestone | 0d | 2016-05-27 12:00 | 2016-05-27 12:00 | 75 | 1d |  |  |  |
| 77 | 1.2.4 | **Detailed Design** |  | 8d | 2016-05-27 12:00 | 2016-06-08 12:00 | 72 | 1d | 0d |  | 144h |
| 78 | 1.2.4.1 | **Database design** |  | 3d | 2016-06-01 13:00 | 2016-06-06 12:00 | 58 | 3d |  |  | 24h |
| 79 | 1.2.4.1.1 | Organize information to Database tables |  | 0.5d | 2016-06-01 13:00 | 2016-06-01 17:00 |  | 3d | 0d | LinhNH | 4h |
| 80 | 1.2.4.1.2 | Define object in Database |  | 1d | 2016-06-02 08:00 | 2016-06-02 17:00 | 79 | 3d | 0d | LinhNH | 8h |
| 81 | 1.2.4.1.3 | Define relationships in Database |  | 1d | 2016-06-03 08:00 | 2016-06-03 17:00 | 80 | 3d | 0d | LinhNH | 8h |
| 82 | 1.2.4.1.4 | Refine Database design |  | 0.5d | 2016-06-06 08:00 | 2016-06-06 12:00 | 81 | 3d |  | LinhNH | 4h |

| ID | WBS | Task | Type | Duration | Start | Finish | Predecessors | Total slack | Free slack | Resources | Work |
| --- | --- | --- | --- | --- | --- | --- | --- | --- | --- | --- | --- |
| 83 | 1.2.4.2 | **Screen design** |  | 7d | 2016-05-27 13:00 | 2016-06-07 12:00 |  | 2d |  |  | 56h |
| 84 | 1.2.4.2.1 | Create Screen Flow digram |  | 1d | 2016-05-27 13:00 | 2016-05-30 12:00 | 35 | 2d | 0d | QuanNH | 8h |
| 85 | 1.2.4.2.2 | Create Screen Definition |  | 2d | 2016-05-30 13:00 | 2016-06-01 12:00 | 84 | 2d | 0d | QuanNH | 16h |
| 86 | 1.2.4.2.3 | Create Screen Design |  | 4d | 2016-06-01 13:00 | 2016-06-07 12:00 | 85 | 2d |  | QuanNH | 32h |
| 87 | 1.2.4.3 | **Class/Component Design** |  | 7d | 2016-05-27 13:00 | 2016-06-07 12:00 | 72 | 1d |  |  | 56h |
| 88 | 1.2.4.3.1 | List components of the system |  | 1d | 2016-05-27 13:00 | 2016-05-30 12:00 |  | 1d | 0d | TungDT | 8h |
| 89 | 1.2.4.3.2 | Create architecture design |  | 2d | 2016-05-30 13:00 | 2016-06-01 12:00 | 88 | 1d | 0d | TungDT | 16h |
| 90 | 1.2.4.3.3 | Create class diagram |  | 4d | 2016-06-01 13:00 | 2016-06-07 12:00 | 89 | 1d | 0d | TungDT | 32h |
| 91 | 1.2.4.4 | Create review checklists |  | 1d | 2016-06-07 13:00 | 2016-06-08 12:00 | 90 | 1d |  | DuyNT | 8h |
| 92 | 1.2.4.5 | Submit details design | milestone | 0d | 2016-05-27 12:00 | 2016-05-27 12:00 |  | 9d |  |  |  |
| 93 | 1.2.5 | **Project Management** |  | 2d | 2016-05-27 13:00 | 2016-05-31 12:00 | 72 | 22d |  |  | 16h |
| 94 | 1.2.5.1 | Update project plan |  | 2d | 2016-05-27 13:00 | 2016-05-31 12:00 |  | 22d |  | MinhNN | 16h |
| 95 | 1.2.6 | **Coding** |  | 2d | 2016-05-25 13:00 | 2016-05-27 12:00 |  | 24d |  |  | 16h |
| 96 | 1.2.6.1 | Build prototype |  | 2d | 2016-05-25 13:00 | 2016-05-27 12:00 |  | 30d | 0d | TungDT | 16h |
| 97 | 1.2.6.2 | Prototype approved | milestone | 0d | 2016-05-27 12:00 | 2016-05-27 12:00 | 96 | 30d | 23d |  |  |
| 98 | 1.2.7 | **Test** |  | 15d | 2016-06-08 13:00 | 2016-06-29 12:00 | 77 | 1d | 0d |  | 72h |
| 99 | 1.2.7.1 | Create Test plan |  | 1d | 2016-06-08 13:00 | 2016-06-09 12:00 |  | 1d | 0d | DuyNT | 8h |
| 100 | 1.2.7.2 | Review + Update Test plan |  | 1d | 2016-06-09 13:00 | 2016-06-10 12:00 | 99 | 1d | 0d | MinhNN | 8h |
| 101 | 1.2.7.3 | Test plan approved | milestone | 0d | 2016-06-10 12:00 | 2016-06-10 12:00 | 100 | 20d |  |  |  |
| 102 | 1.2.7.4 | **Writing Test cases** |  | 7d | 2016-06-20 13:00 | 2016-06-29 12:00 | 100FS+6d | 1d |  |  | 56h |
| 103 | 1.2.7.4.1 | Create Integration Test Case |  | 5d | 2016-06-20 13:00 | 2016-06-27 12:00 |  | 1d | 0d | QuanNH | 40h |
| 104 | 1.2.7.4.2 | Update and review Integration Test Case |  | 2d | 2016-06-27 13:00 | 2016-06-29 12:00 | 103 | 1d | 0d | MinhNN | 16h |
| 105 | 1.2.8 | Phase meeting |  | 0.5d | 2016-06-01 13:00 | 2016-06-01 17:00 | 58 | 20.5d |  | TEAM | 4h |
| 106 | 1.2.9 | Finish solution phase | milestone | 0d | 2016-05-25 12:00 | 2016-05-25 12:00 |  | 32d |  |  |  |

Notes:
- 102: Summer Vacation

| ID | WBS | Task | Type | Duration | Start | Finish | Predecessors | Total slack | Free slack | Resources | Work |
| --- | --- | --- | --- | --- | --- | --- | --- | --- | --- | --- | --- |
| 107 | 1.3 | **Construction** |  | 40.5d | 2016-06-29 12:00 | 2016-08-24 17:00 | 57 | 1d | 0d |  | 1080h |
| 108 | 1.3.1 | **Design** |  | 2d | 2016-06-29 13:00 | 2016-07-01 12:00 |  | 39.5d |  |  | 16h |
| 109 | 1.3.1.1 | Refine Design document |  | 2d | 2016-06-29 13:00 | 2016-07-01 12:00 |  | 39.5d |  | TungDT | 16h |
| 110 | 1.3.2 | **Coding** |  | 23d | 2016-06-29 13:00 | 2016-08-01 12:00 | 97 | 1d | 0d |  | 576h |
| 111 | 1.3.2.1 | **Coding product** |  | 23d | 2016-06-29 13:00 | 2016-08-01 12:00 |  | 1d | 0d |  | 576h |
| 112 | 1.3.2.1.1 | **Coding Fronent Modules** |  | 15d | 2016-06-29 13:00 | 2016-07-20 12:00 |  | 9d |  |  | 208h |
| 113 | 1.3.2.1.1.1 | **Core Module** |  | 15d | 2016-06-29 13:00 | 2016-07-20 12:00 |  | 9d |  |  | 208h |
| 114 | 1.3.2.1.1.1.1 | Common module |  | 2d | 2016-06-29 13:00 | 2016-07-01 12:00 |  | 9d | 0d | DuyNT | 16h |
| 115 | 1.3.2.1.1.1.2 | Authentication module |  | 1d | 2016-07-01 13:00 | 2016-07-04 12:00 | 114 | 9d | 0d | DuyNT | 8h |
| 116 | 1.3.2.1.1.1.3 | Learning module |  | 8d | 2016-07-04 13:00 | 2016-07-14 12:00 | 115 | 9d | 0d | DuyNT | 64h |
| 117 | 1.3.2.1.1.1.4 | Examination module |  | 4d | 2016-07-14 13:00 | 2016-07-20 12:00 | 116 | 9d |  | DuyNT | 32h |
| 118 | 1.3.2.1.1.1.5 | Account Management module |  | 4d | 2016-06-29 13:00 | 2016-07-05 12:00 | 97 | 13d | 0d | ThangPD | 32h |
| 119 | 1.3.2.1.1.1.6 | Question Bank module |  | 4d | 2016-07-05 13:00 | 2016-07-11 12:00 | 118 | 13d | 0d | ThangPD | 32h |
| 120 | 1.3.2.1.1.1.7 | Content Reporting module |  | 1d | 2016-07-11 13:00 | 2016-07-12 12:00 | 119 | 13d | 0d | ThangPD | 8h |
| 121 | 1.3.2.1.1.1.8 | Statistic module |  | 2d | 2016-07-12 13:00 | 2016-07-14 12:00 | 120 | 13d |  | ThangPD | 16h |
| 122 | 1.3.2.1.2 | **Coding Backend Modules** |  | 23d | 2016-06-29 13:00 | 2016-08-01 12:00 | 97 | 1d |  |  | 368h |
| 123 | 1.3.2.1.2.1 | **Core Module** |  | 23d | 2016-06-29 13:00 | 2016-08-01 12:00 |  | 1d |  |  | 368h |
| 124 | 1.3.2.1.2.1.1 | Model Component |  | 1d | 2016-06-29 13:00 | 2016-06-30 12:00 |  | 1d | 0d | LinhNH; TungDT | 16h |
| 125 | 1.3.2.1.2.1.2 | DAO Component |  | 4d | 2016-06-30 13:00 | 2016-07-06 12:00 | 124 | 1d | 0d | LinhNH; TungDT | 64h |
| 126 | 1.3.2.1.2.1.3 | Service Component |  | 8d | 2016-07-06 13:00 | 2016-07-18 12:00 | 125 | 1d | 0d | LinhNH; TungDT | 128h |
| 127 | 1.3.2.1.2.1.4 | Controller Component |  | 8d | 2016-07-18 13:00 | 2016-07-28 12:00 | 126 | 1d | 0d | LinhNH; TungDT | 128h |
| 128 | 1.3.2.1.2.1.5 | Integrate components |  | 2d | 2016-07-28 13:00 | 2016-08-01 12:00 | 127 | 1d |  | LinhNH; TungDT | 32h |
| 129 | 1.3.2.2 | Product development completes | milestone | 0d | 2016-08-01 12:00 | 2016-08-01 12:00 | 111 | 1d |  |  |  |
| 130 | 1.3.3 | **Testing** |  | 32d | 2016-06-29 13:00 | 2016-08-12 12:00 | 98 | 9.5d |  |  | 408h |
| 131 | 1.3.3.1 | **Writing Test cases (Continue)** |  | 6d | 2016-06-29 13:00 | 2016-07-07 12:00 |  | 35.5d | 0d |  | 48h |
| 132 | 1.3.3.1.1 | Create System Test Case |  | 4d | 2016-06-29 13:00 | 2016-07-05 12:00 | 104 | 35.5d | 0d | QuanNH | 32h |
| 133 | 1.3.3.1.2 | Update and review System Test Case |  | 2d | 2016-07-05 13:00 | 2016-07-07 12:00 | 132 | 35.5d |  | MinhNN | 16h |
| 134 | 1.3.3.2 | Writing Test cases completes | milestone | 0d | 2016-07-07 12:00 | 2016-07-07 12:00 | 131 | 34.5d |  |  |  |

| ID | WBS | Task | Type | Duration | Start | Finish | Predecessors | Total slack | Free slack | Resources | Work |
| --- | --- | --- | --- | --- | --- | --- | --- | --- | --- | --- | --- |
| 135 | 1.3.3.3 | **Execute Test** |  | 9d | 2016-08-01 13:00 | 2016-08-12 12:00 | 110 | 1d | 0d |  | 200h |
| 136 | 1.3.3.3.1 | **Execute Test Frontend** |  | 4d | 2016-08-01 13:00 | 2016-08-05 12:00 |  | 6d | 0d |  | 48h |
| 137 | 1.3.3.3.1.1 | Execute Integration Test |  | 2d | 2016-08-01 13:00 | 2016-08-03 12:00 |  | 6d | 0d | QuanNH | 16h |
| 138 | 1.3.3.3.1.2 | Fix bug Integration Test |  | 2d | 2016-08-03 13:00 | 2016-08-05 12:00 | 137 | 6d |  | DuyNT; ThangPD | 32h |
| 139 | 1.3.3.3.2 | **Execute Test Backend** |  | 4d | 2016-08-01 13:00 | 2016-08-05 12:00 | 136SS | 1d |  |  | 48h |
| 140 | 1.3.3.3.2.1 | Execute Integration Test |  | 2d | 2016-08-01 13:00 | 2016-08-03 12:00 |  | 1d | 0d | QuanNH | 16h |
| 141 | 1.3.3.3.2.2 | Fix bug Integration Test |  | 2d | 2016-08-03 13:00 | 2016-08-05 12:00 | 140 | 6d |  | LinhNH; TungDT | 32h |
| 142 | 1.3.3.3.3 | Execute System Test |  | 4d | 2016-08-03 13:00 | 2016-08-09 12:00 | 140 | 1d | 0d | DuyNT; QuanNH | 64h |
| 143 | 1.3.3.3.4 | Fix bug System Test |  | 2d | 2016-08-09 13:00 | 2016-08-11 12:00 | 142 | 1d | 0d | LinhNH; ThangPD | 32h |
| 144 | 1.3.3.3.5 | Create Test Report first verstion |  | 1d | 2016-08-11 13:00 | 2016-08-12 12:00 | 143 | 1d | 0d | QuanNH | 8h |
| 145 | 1.3.3.3.6 | Complete Testing | milestone | 0d | 2016-08-12 12:00 | 2016-08-12 12:00 | 144 | 1d |  |  |  |
| 146 | 1.3.3.4 | **Manage development** |  | 5d | 2016-06-29 13:00 | 2016-07-06 12:00 | 110SS | 36.5d |  |  | 160h |
| 147 | 1.3.3.4.1 | **Manage scope/cost/time** |  | 5d | 2016-06-29 13:00 | 2016-07-06 12:00 |  | 36.5d |  |  | 80h |
| 148 | 1.3.3.4.1.1 | Monitor product changes |  | 1w | 2016-06-29 13:00 | 2016-07-06 12:00 |  | 33.5d |  | MinhNN | 40h |
| 149 | 1.3.3.4.1.2 | Monitor project changes |  | 1w | 2016-06-29 13:00 | 2016-07-06 12:00 |  | 33.5d |  | MinhNN | 40h |
| 150 | 1.3.3.4.2 | **Manage communications** |  | 1d | 2016-06-29 13:00 | 2016-06-30 12:00 |  | 40.5d |  |  | 40h |
| 151 | 1.3.3.4.2.1 | **Implement communications methods and strategies** |  | 1d | 2016-06-29 13:00 | 2016-06-30 12:00 |  | 40.5d |  |  | 8h |
| 152 | 1.3.3.4.2.1.1 | Select tools |  | 1d | 2016-06-29 13:00 | 2016-06-30 12:00 |  | 37.5d |  | MinhNN | 8h |
| 153 | 1.3.3.4.2.2 | **Distribute information** |  | 1d | 2016-06-29 13:00 | 2016-06-30 12:00 |  | 40.5d |  |  | 24h |
| 154 | 1.3.3.4.2.2.1 | Attend team meeting |  | 1d | 2016-06-29 13:00 | 2016-06-30 12:00 |  | 37.5d |  | TEAM | 8h |
| 155 | 1.3.3.4.2.2.2 | Create status reports |  | 1d | 2016-06-29 13:00 | 2016-06-30 12:00 |  | 37.5d |  | QuanNH | 8h |
| 156 | 1.3.3.4.2.2.3 | Create Weekly Report |  | 1d | 2016-06-29 13:00 | 2016-06-30 12:00 |  | 37.5d |  | MinhNN | 8h |
| 157 | 1.3.3.4.2.3 | Resolve communications problems |  | 1d | 2016-06-29 13:00 | 2016-06-30 12:00 |  | 37.5d |  | MinhNN | 8h |
| 158 | 1.3.3.4.3 | **Manage quality control** |  | 1d | 2016-06-29 13:00 | 2016-06-30 12:00 |  | 40.5d |  |  | 16h |
| 159 | 1.3.3.4.3.1 | Monitor product quality |  | 1d | 2016-06-29 13:00 | 2016-06-30 12:00 |  | 37.5d |  | MinhNN | 8h |

| ID | WBS | Task | Type | Duration | Start | Finish | Predecessors | Total slack | Free slack | Constraint | Resources | Work |
| --- | --- | --- | --- | --- | --- | --- | --- | --- | --- | --- | --- | --- |
| 160 | 1.3.3.4.3.2 | **Monitor project quality** |  | 1d | 2016-06-29 13:00 | 2016-06-30 12:00 |  | 40.5d |  |  |  | 8h |
| 161 | 1.3.3.4.3.2.1 | Implement process improvements |  | 1d | 2016-06-29 13:00 | 2016-06-30 12:00 |  | 37.5d |  |  | MinhNN | 8h |
| 162 | 1.3.3.4.4 | **Manage risk** |  | 1d | 2016-06-29 13:00 | 2016-06-30 12:00 |  | 40.5d |  |  |  | 16h |
| 163 | 1.3.3.4.4.1 | Monitor risks |  | 1d | 2016-06-29 13:00 | 2016-06-30 12:00 |  | 37.5d |  |  | MinhNN | 8h |
| 164 | 1.3.3.4.4.2 | Specify responses |  | 1d | 2016-06-29 13:00 | 2016-06-30 12:00 |  | 37.5d |  |  | MinhNN | 8h |
| 165 | 1.3.3.4.5 | Manage integration |  | 1d | 2016-06-29 13:00 | 2016-06-30 12:00 |  | 37.5d |  |  | MinhNN | 8h |
| 166 | 1.3.4 | **User Manual** |  | 12d | 2016-08-01 13:00 | 2016-08-17 12:00 | 110 | 1d | 0d |  |  | 32h |
| 167 | 1.3.4.1 | Create Installation guideline |  | 1d | 2016-08-01 13:00 | 2016-08-02 12:00 |  | 12d |  |  | TungDT | 8h |
| 168 | 1.3.4.2 | Create User guideline |  | 2d | 2016-08-12 13:00 | 2016-08-16 12:00 | 135 | 1d | 0d |  | QuanNH | 16h |
| 169 | 1.3.4.3 | Review + Update guidelines |  | 1d | 2016-08-16 13:00 | 2016-08-17 12:00 | 168 | 1d |  |  | MinhNN | 8h |
| 170 | 1.3.5 | **Create final report + CD** |  | 5d | 2016-08-17 13:00 | 2016-08-24 12:00 | 166 | 1d | 0d |  |  | 48h |
| 171 | 1.3.5.1 | Create presentation slide |  | 1d | 2016-08-17 13:00 | 2016-08-18 12:00 |  | 5d |  |  | LinhNH | 8h |
| 172 | 1.3.5.2 | Create final report |  | 4d | 2016-08-17 13:00 | 2016-08-23 12:00 | 166 | 1d | 0d |  | MinhNN | 32h |
| 173 | 1.3.5.3 | Write CD + Print documents |  | 1d | 2016-08-23 13:00 | 2016-08-24 12:00 | 172 | 1d |  |  | TEAM | 8h |
| 174 | 1.3.6 | Phase meeting |  | 0.5d | 2016-08-24 13:00 | 2016-08-24 17:00 | 170 | 1d |  |  |  |  |
| 175 | 1.3.7 | Finish Construction Phase | milestone | 0d | 2016-06-29 12:00 | 2016-06-29 12:00 |  | 41.5d |  |  |  |  |
| 176 | 1.4 | **Termination** |  | 6d | 2016-08-25 08:00 | 2016-09-01 17:00 | 107 | 0d |  |  |  | 48h |
| 177 | 1.4.1 | **Pre-Closing** |  | 3d | 2016-08-25 08:00 | 2016-08-29 17:00 |  | 1d | 0d |  |  | 24h |
| 178 | 1.4.1.1 | Training presentation |  | 3d | 2016-08-25 08:00 | 2016-08-29 17:00 |  | 1d |  |  | TEAM | 24h |
| 179 | 1.4.2 | **Closing** |  | 3d | 2016-08-30 08:00 | 2016-09-01 17:00 | 177 | 0d |  |  |  | 24h |
| 180 | 1.4.2.1 | Prepare for presentation |  | 2d | 2016-08-30 08:00 | 2016-08-31 17:00 |  | 1d |  |  | TEAM | 16h |
| 181 | 1.4.2.2 | Represent Capstone Project and Completed |  | 1d | 2016-09-01 08:00 | 2016-09-01 17:00 |  | 0d |  | start no earlier than 2016-09-01 08:00 | TEAM | 8h |
| 182 | 1.5 | Finish Capstone Project | milestone | 0d | 2016-09-01 17:00 | 2016-09-01 17:00 | 176 | 0d |  |  |  |  |
